# ربات هوشمند تفکیک خودکار پسماند

Schedule from MS Project XML, 2026-11-02 to 2027-06-02, status date 2026-10-27.
طراحی و ساخت نمونه اولیه آزمایشگاهی
ساختار اولیه برای بررسی؛ مدت‌ها و روابط پیش‌نیازی تخمینی‌اند و باید با استاد راهنما بازبینی شوند.

## Calendars

- Standard: Mon-Fri 08:00-12:00, 13:00-17:00; Sat-Sun off.

## Schedule

| ID | WBS | Task | Type | Duration | Start | Finish | Predecessors |
| --- | --- | --- | --- | --- | --- | --- | --- |
| 1 | 0.0 | **فاز صفر: تعریف پروژه، امکان‌سنجی و نیازمندی‌ها** |  | 28d | 2026-11-02 | 2026-12-09 |  |
| 2 | 0.1 | **تعریف مسئله و محدوده پروژه** |  | 7d | 2026-11-02 | 2026-11-10 |  |
| 3 | 0.1.1 | تعریف هدف، مسئله و سناریوی بهره‌برداری |  | 3d | 2026-11-02 | 2026-11-04 |  |
| 4 | 0.1.2 | تعیین گروه‌های پسماند هدف و موارد نامشخص |  | 2d | 2026-11-05 | 2026-11-06 | 3 |
| 5 | 0.1.3 | تعیین فرضیات عملیاتی و محدودیت‌ها |  | 2d | 2026-11-09 | 2026-11-10 | 4 |
| 6 | 0.2 | **تحقیق و امکان‌سنجی فنی** |  | 11d | 2026-11-11 | 2026-11-25 |  |
| 7 | 0.2.1 | مطالعه نمونه‌های مشابه و منابع فنی |  | 5d | 2026-11-11 | 2026-11-17 | 5 |
| 8 | 0.2.2 | مقایسه روش‌های تشخیص و جداسازی |  | 3d | 2026-11-18 | 2026-11-20 | 7 |
| 9 | 0.2.3 | برآورد اولیه هزینه، قطعات و ریسک ساخت |  | 3d | 2026-11-23 | 2026-11-25 | 8 |
| 10 | 0.3 | **تدوین نیازمندی‌ها و معیارهای پذیرش** |  | 10d | 2026-11-26 | 2026-12-09 |  |
| 11 | 0.3.1 | تدوین نیازمندی‌های عملکردی |  | 3d | 2026-11-26 | 2026-11-30 | 9 |
| 12 | 0.3.2 | تعیین شاخص‌های عملکرد و آزمون |  | 3d | 2026-12-01 | 2026-12-03 | 11 |
| 13 | 0.3.3 | تعریف سناریوهای خطا و الزامات ایمنی |  | 3d | 2026-12-04 | 2026-12-08 | 12 |
| 14 | 0.3.4 | نقطه عطف: تصویب نیازمندی‌ها | milestone | 0d | 2026-12-09 | 2026-12-09 | 11, 12, 13, 17 |
| 15 | 0.4 | **برنامه‌ریزی پروژه و مدیریت ریسک** |  | 4d | 2026-11-05 | 2026-11-10 |  |
| 16 | 0.4.1 | تدوین برنامه اولیه زمان و منابع |  | 2d | 2026-11-05 | 2026-11-06 | 3 |
| 17 | 0.4.2 | ایجاد فهرست ریسک و اقدامات کاهشی |  | 2d | 2026-11-09 | 2026-11-10 | 16 |
| 18 | 1.0 | **فاز یک: طراحی مهندسی و طراحی مفهومی** |  | 28d | 2026-12-10 | 2027-01-18 |  |
| 19 | 1.1 | **معماری کلان سامانه** |  | 9d | 2026-12-10 | 2026-12-22 |  |
| 20 | 1.1.1 | ترسیم بلوک‌دیاگرام سامانه |  | 3d | 2026-12-10 | 2026-12-14 | 14 |
| 21 | 1.1.2 | طراحی جریان فرایند و توالی عملکرد |  | 3d | 2026-12-15 | 2026-12-17 | 20 |
| 22 | 1.1.3 | تعریف رابط‌ها و پیام‌های بین زیرسامانه‌ها |  | 3d | 2026-12-18 | 2026-12-22 | 21 |
| 23 | 1.2 | **طراحی مکانیکی (CAD)** |  | 13d | 2026-12-23 | 2027-01-08 |  |
| 24 | 1.2.1 | طراحی قاب و نوار نقاله |  | 5d | 2026-12-23 | 2026-12-29 | 22 |
| 25 | 1.2.2 | طراحی مکانیزم جداسازی موتوری |  | 3d | 2026-12-30 | 2027-01-01 | 24 |
| 26 | 1.2.3 | طراحی محفظه‌ها و محل حسگر پرشدگی |  | 2d | 2027-01-04 | 2027-01-05 | 25 |
| 27 | 1.2.4 | تهیه نقشه ساخت و مونتاژ |  | 3d | 2027-01-06 | 2027-01-08 | 26 |

Notes:
- 1: تعریف محدوده نمونه اولیه، نیازمندی‌ها، معیارهای پذیرش و ریسک‌های اولیه. / خروجی مورد انتظار: تعریف محدوده نمونه اولیه، نیازمندی‌ها، معیارهای پذیرش و ریسک‌های اولیه.
- 2: توافق بر هدف، کاربران هدف و مرزهای نمونه اولیه. / خروجی مورد انتظار: توافق بر هدف، کاربران هدف و مرزهای نمونه اولیه.
- 3: بیانیه مسئله و هدف پروژه؛ شرح سناریوی کاربری. / مدت تخمینی: 2 روز کاری / خروجی مورد انتظار: بیانیه مسئله و هدف پروژه؛ شرح سناریوی کاربری.
- 4: دامنه اولیه: پلاستیک، فلز، کاغذ و مسیر «نامشخص». / مدت تخمینی: 1 روز کاری / پیش‌نیاز: 0.1.1 / خروجی مورد انتظار: دامنه اولیه: پلاستیک، فلز، کاغذ و مسیر «نامشخص».
- 5: فرضیات نمونه: شیء تمیز و خشک، تغذیه تک‌به‌تک و محیط آزمایشگاهی. / مدت تخمینی: 1 روز کاری / پیش‌نیاز: 0.1.2 / خروجی مورد انتظار: فرضیات نمونه: شیء تمیز و خشک، تغذیه تک‌به‌تک و محیط آزمایشگاهی.
- 6: بررسی راهکارهای موجود و انتخاب معماری قابل ساخت در سطح کارشناسی. / خروجی مورد انتظار: بررسی راهکارهای موجود و انتخاب معماری قابل ساخت در سطح کارشناسی.
- 7: خلاصه مرور منابع، نمونه‌های مشابه و روش‌های تفکیک. / مدت تخمینی: 3 روز کاری / پیش‌نیاز: 0.1.3 / خروجی مورد انتظار: خلاصه مرور منابع، نمونه‌های مشابه و روش‌های تفکیک.
- 8: مقایسه دوربین، حسگر القایی فلز و روش‌های مکانیکی جداسازی. / مدت تخمینی: 2 روز کاری / پیش‌نیاز: 0.2.1 / خروجی مورد انتظار: مقایسه دوربین، حسگر القایی فلز و روش‌های مکانیکی جداسازی.
- 9: برآورد اولیه هزینه و فهرست ریسک‌های فنی/تأمین قطعه. / مدت تخمینی: 2 روز کاری / پیش‌نیاز: 0.2.2 / خروجی مورد انتظار: برآورد اولیه هزینه و فهرست ریسک‌های فنی/تأمین قطعه.
- 10: تعریف شاخص‌هایی که با آن‌ها عملکرد نمونه اولیه سنجیده می‌شود. / خروجی مورد انتظار: تعریف شاخص‌هایی که با آن‌ها عملکرد نمونه اولیه سنجیده می‌شود.
- 11: فهرست نیازمندی‌های تشخیص، انتقال، جداسازی و پایش. / مدت تخمینی: 2 روز کاری / پیش‌نیاز: 0.2.3 / خروجی مورد انتظار: فهرست نیازمندی‌های تشخیص، انتقال، جداسازی و پایش.
- 12: تعریف دقت تشخیص، نرخ جداسازی موفق، زمان پاسخ و نرخ پردازش. / مدت تخمینی: 2 روز کاری / پیش‌نیاز: 0.3.1 / خروجی مورد انتظار: تعریف دقت تشخیص، نرخ جداسازی موفق، زمان پاسخ و نرخ پردازش.
- 13: سناریوهای گیرکردن، پرشدن محفظه، قطع حسگر و توقف اضطراری. / مدت تخمینی: 2 روز کاری / پیش‌نیاز: 0.3.2 / خروجی مورد انتظار: سناریوهای گیرکردن، پرشدن محفظه، قطع حسگر و توقف اضطراری.
- 14: تأیید محدوده و معیارهای آزمون برای ورود به طراحی. / مدت تخمینی: نقطه‌عطف (صفر روز کاری) / پیش‌نیاز: 0.3.1, 0.3.2, 0.3.3, 0.4.2 / خروجی مورد انتظار: تأیید محدوده و معیارهای آزمون برای ورود به طراحی.
- 15: تدوین مبنای اولیه زمان‌بندی، منابع، هزینه و ریسک‌ها. / خروجی مورد انتظار: تدوین مبنای اولیه زمان‌بندی، منابع، هزینه و ریسک‌ها.
- 16: زمان‌بندی اولیه، مسئولیت‌ها و نیازهای کارگاهی/آزمایشگاهی. / مدت تخمینی: 1 روز کاری / پیش‌نیاز: 0.1.1 / خروجی مورد انتظار: زمان‌بندی اولیه، مسئولیت‌ها و نیازهای کارگاهی/آزمایشگاهی.
- 17: ثبت ریسک‌های بینایی ماشین، خرید، ساخت مکانیکی و یکپارچه‌سازی. / مدت تخمینی: 1 روز کاری / پیش‌نیاز: 0.4.1 / خروجی مورد انتظار: ثبت ریسک‌های بینایی ماشین، خرید، ساخت مکانیکی و یکپارچه‌سازی.
- 18: تبدیل نیازمندی‌های تأییدشده به طرح مکانیکی، الکتریکی، کنترلی و نرم‌افزاری. / خروجی مورد انتظار: تبدیل نیازمندی‌های تأییدشده به طرح مکانیکی، الکتریکی، کنترلی و نرم‌افزاری.
- 19: تعریف زیرسامانه‌ها و رابط میان پردازش تصویر و کنترل‌کننده. / خروجی مورد انتظار: تعریف زیرسامانه‌ها و رابط میان پردازش تصویر و کنترل‌کننده.
- 20: بلوک‌دیاگرام دوربین/رایانه، کنترل‌کننده، حسگرها، موتورها و نوار نقاله. / مدت تخمینی: 2 روز کاری / پیش‌نیاز: 0.3.4 / خروجی مورد انتظار: بلوک‌دیاگرام دوربین/رایانه، کنترل‌کننده، حسگرها، موتورها و نوار نقاله.
- 21: فلوچارت از ورود شیء تا تشخیص، رهگیری و انداختن در محفظه. / مدت تخمینی: 2 روز کاری / پیش‌نیاز: 1.1.1 / خروجی مورد انتظار: فلوچارت از ورود شیء تا تشخیص، رهگیری و انداختن در محفظه.
- 22: تعریف فرمان‌ها، وضعیت‌ها، خطاها و قالب تبادل داده. / مدت تخمینی: 2 روز کاری / پیش‌نیاز: 1.1.2 / خروجی مورد انتظار: تعریف فرمان‌ها، وضعیت‌ها، خطاها و قالب تبادل داده.
- 23: طراحی قاب، نوار نقاله، مکانیزم جداسازی و محفظه‌ها. / خروجی مورد انتظار: طراحی قاب، نوار نقاله، مکانیزم جداسازی و محفظه‌ها.
- 24: مدل اولیه CAD، ابعاد و جانمایی اجزای مکانیکی. / مدت تخمینی: 3 روز کاری / پیش‌نیاز: 1.1.3 / خروجی مورد انتظار: مدل اولیه CAD، ابعاد و جانمایی اجزای مکانیکی.
- 25: طرح دریچه/بازوی هدایت‌کننده با دسترسی ایمن و قابل تنظیم. / مدت تخمینی: 2 روز کاری / پیش‌نیاز: 1.2.1 / خروجی مورد انتظار: طرح دریچه/بازوی هدایت‌کننده با دسترسی ایمن و قابل تنظیم.
- 26: چیدمان محفظه‌های پلاستیک، فلز، کاغذ و نامشخص. / مدت تخمینی: 1 روز کاری / پیش‌نیاز: 1.2.2 / خروجی مورد انتظار: چیدمان محفظه‌های پلاستیک، فلز، کاغذ و نامشخص.
- 27: نقشه‌های ابعادی، فهرست اتصالات و روش مونتاژ. / مدت تخمینی: 2 روز کاری / پیش‌نیاز: 1.2.3 / خروجی مورد انتظار: نقشه‌های ابعادی، فهرست اتصالات و روش مونتاژ.

| ID | WBS | Task | Type | Duration | Start | Finish | Predecessors |
| --- | --- | --- | --- | --- | --- | --- | --- |
| 28 | 1.3 | **طراحی برق، الکترونیک و کنترل** |  | 10d | 2026-12-23 | 2027-01-05 |  |
| 29 | 1.3.1 | محاسبه توان و طراحی تغذیه |  | 2d | 2026-12-23 | 2026-12-24 | 22 |
| 30 | 1.3.2 | انتخاب موتور، درایور، انکودر و حسگرها |  | 3d | 2026-12-25 | 2026-12-29 | 29 |
| 31 | 1.3.3 | طراحی شماتیک و سیم‌بندی |  | 3d | 2026-12-30 | 2027-01-01 | 30 |
| 32 | 1.3.4 | طراحی توقف اضطراری و حفاظت‌ها |  | 2d | 2027-01-04 | 2027-01-05 | 31 |
| 33 | 1.4 | **طراحی سامانه بینایی ماشین** |  | 10d | 2026-12-23 | 2027-01-05 |  |
| 34 | 1.4.1 | انتخاب دوربین، نورپردازی و پس‌زمینه |  | 2d | 2026-12-23 | 2026-12-24 | 22 |
| 35 | 1.4.2 | تعیین راهبرد جمع‌آوری داده تصویری |  | 3d | 2026-12-25 | 2026-12-29 | 34 |
| 36 | 1.4.3 | انتخاب روش/مدل طبقه‌بندی تصویر |  | 3d | 2026-12-30 | 2027-01-01 | 35 |
| 37 | 1.4.4 | تعریف آستانه اطمینان و کلاس نامشخص |  | 2d | 2027-01-04 | 2027-01-05 | 36 |
| 38 | 1.5 | **طراحی نرم‌افزار، ارتباطات و داشبورد** |  | 9d | 2026-12-23 | 2027-01-04 |  |
| 39 | 1.5.1 | انتخاب معماری پردازش و کنترل |  | 2d | 2026-12-23 | 2026-12-24 | 22 |
| 40 | 1.5.2 | طراحی ماشین حالت و زمان‌بندی حرکت |  | 3d | 2026-12-25 | 2026-12-29 | 39 |
| 41 | 1.5.3 | طراحی فیلدهای داشبورد و ثبت داده |  | 2d | 2026-12-30 | 2026-12-31 | 40 |
| 42 | 1.5.4 | تعریف پروتکل ارتباطی و قالب پیام‌ها |  | 2d | 2027-01-01 | 2027-01-04 | 41 |
| 43 | 1.6 | **بازبینی و تثبیت طراحی** |  | 6d | 2027-01-11 | 2027-01-18 |  |
| 44 | 1.6.1 | یکپارچه‌سازی BOM، نقشه‌ها و شماتیک‌ها |  | 3d | 2027-01-11 | 2027-01-13 | 27, 32, 37, 42 |
| 45 | 1.6.2 | بازبینی طراحی در برابر نیازمندی‌ها |  | 2d | 2027-01-14 | 2027-01-15 | 44 |
| 46 | 1.6.3 | نقطه عطف: تصویب طراحی و BOM | milestone | 0d | 2027-01-18 | 2027-01-18 | 45 |
| 47 | 2.0 | **فاز دو: تأمین قطعات و ساخت نمونه اولیه** |  | 21d | 2027-01-19 | 2027-02-16 |  |
| 48 | 2.1 | **تأمین و خرید قطعات** |  | 15d | 2027-01-19 | 2027-02-08 |  |
| 49 | 2.1.1 | نهایی‌سازی BOM و قطعات جایگزین |  | 2d | 2027-01-19 | 2027-01-20 | 46 |
| 50 | 2.1.2 | تأمین قطعات مکانیکی و ساخت سفارشی |  | 5d | 2027-01-21 | 2027-01-27 | 49 |
| 51 | 2.1.3 | تأمین کنترل‌کننده، موتورها و حسگرها |  | 5d | 2027-01-28 | 2027-02-03 | 50 |
| 52 | 2.1.4 | تأمین دوربین، رایانه و نورپردازی |  | 3d | 2027-02-04 | 2027-02-08 | 51 |

Notes:
- 28: انتخاب توان، درایورها، حسگرها و ساختار کنترل حرکت. / خروجی مورد انتظار: انتخاب توان، درایورها، حسگرها و ساختار کنترل حرکت.
- 29: جدول توان، انتخاب ولتاژها و ظرفیت منبع تغذیه. / مدت تخمینی: 1 روز کاری / پیش‌نیاز: 1.1.3 / خروجی مورد انتظار: جدول توان، انتخاب ولتاژها و ظرفیت منبع تغذیه.
- 30: فهرست قطعات و دلیل انتخاب موتور/درایور/انکودر/حسگرها. / مدت تخمینی: 2 روز کاری / پیش‌نیاز: 1.3.1 / خروجی مورد انتظار: فهرست قطعات و دلیل انتخاب موتور/درایور/انکودر/حسگرها.
- 31: شماتیک اتصالات تغذیه، کنترل‌کننده، موتورها و ورودی/خروجی‌ها. / مدت تخمینی: 2 روز کاری / پیش‌نیاز: 1.3.2 / خروجی مورد انتظار: شماتیک اتصالات تغذیه، کنترل‌کننده، موتورها و ورودی/خروجی‌ها.
- 32: طرح قطع ایمن توان عملگرها و حفاظت الکتریکی پایه. / مدت تخمینی: 1 روز کاری / پیش‌نیاز: 1.3.3 / خروجی مورد انتظار: طرح قطع ایمن توان عملگرها و حفاظت الکتریکی پایه.
- 33: تعریف شرایط تصویربرداری و راهبرد تشخیص کلاس‌های پسماند. / خروجی مورد انتظار: تعریف شرایط تصویربرداری و راهبرد تشخیص کلاس‌های پسماند.
- 34: مشخصات دوربین، فاصله نصب و شرایط نورپردازی. / مدت تخمینی: 1 روز کاری / پیش‌نیاز: 1.1.3 / خروجی مورد انتظار: مشخصات دوربین، فاصله نصب و شرایط نورپردازی.
- 35: طرح نمونه‌برداری از اشیای هدف و تنوع ظاهری آن‌ها. / مدت تخمینی: 2 روز کاری / پیش‌نیاز: 1.4.1 / خروجی مورد انتظار: طرح نمونه‌برداری از اشیای هدف و تنوع ظاهری آن‌ها.
- 36: توجیه انتخاب الگوریتم و ابزار نرم‌افزاری متناسب با توان پردازش. / مدت تخمینی: 2 روز کاری / پیش‌نیاز: 1.4.2 / خروجی مورد انتظار: توجیه انتخاب الگوریتم و ابزار نرم‌افزاری متناسب با توان پردازش.
- 37: قواعد برخورد با پیش‌بینی کم‌اطمینان و جلوگیری از جداسازی اشتباه. / مدت تخمینی: 1 روز کاری / پیش‌نیاز: 1.4.3 / خروجی مورد انتظار: قواعد برخورد با پیش‌بینی کم‌اطمینان و جلوگیری از جداسازی اشتباه.
- 38: تعریف منطق توالی، رابط ارتباطی و شاخص‌های قابل نمایش. / خروجی مورد انتظار: تعریف منطق توالی، رابط ارتباطی و شاخص‌های قابل نمایش.
- 39: تعیین نقش رایانه/رزبری‌پای و Arduino/ESP32 در سامانه. / مدت تخمینی: 1 روز کاری / پیش‌نیاز: 1.1.3 / خروجی مورد انتظار: تعیین نقش رایانه/رزبری‌پای و Arduino/ESP32 در سامانه.
- 40: نمودار حالت‌های آماده‌به‌کار، تشخیص، جداسازی، خطا و توقف. / مدت تخمینی: 2 روز کاری / پیش‌نیاز: 1.5.1 / خروجی مورد انتظار: نمودار حالت‌های آماده‌به‌کار، تشخیص، جداسازی، خطا و توقف.
- 41: تعریف تعداد تفکیک، وضعیت محفظه، خطاها و نتیجه تشخیص. / مدت تخمینی: 1 روز کاری / پیش‌نیاز: 1.5.2 / خروجی مورد انتظار: تعریف تعداد تفکیک، وضعیت محفظه، خطاها و نتیجه تشخیص.
- 42: تعریف پیام‌های وضعیت/فرمان و شرایط بازیابی ارتباط. / مدت تخمینی: 1 روز کاری / پیش‌نیاز: 1.5.3 / خروجی مورد انتظار: تعریف پیام‌های وضعیت/فرمان و شرایط بازیابی ارتباط.
- 43: کنترل سازگاری طرح‌ها با معیارهای پذیرش و تثبیت فهرست قطعات. / خروجی مورد انتظار: کنترل سازگاری طرح‌ها با معیارهای پذیرش و تثبیت فهرست قطعات.
- 44: بسته طراحی اولیه شامل BOM، CAD، نقشه سیم‌بندی و معماری نرم‌افزار. / مدت تخمینی: 2 روز کاری / پیش‌نیاز: 1.2.4, 1.3.4, 1.4.4, 1.5.4 / خروجی مورد انتظار: بسته طراحی اولیه شامل BOM، CAD، نقشه سیم‌بندی و معماری نرم‌افزار.
- 45: فهرست موارد انطباق، موارد باز و اصلاحات پیش از ساخت. / مدت تخمینی: 1 روز کاری / پیش‌نیاز: 1.6.1 / خروجی مورد انتظار: فهرست موارد انطباق، موارد باز و اصلاحات پیش از ساخت.
- 46: مجوز ورود به خرید و ساخت بر اساس طرح بازبینی‌شده. / مدت تخمینی: نقطه‌عطف (صفر روز کاری) / پیش‌نیاز: 1.6.2 / خروجی مورد انتظار: مجوز ورود به خرید و ساخت بر اساس طرح بازبینی‌شده.
- 47: تهیه قطعات و ساخت نمونه مکانیکی/الکتریکی قابل راه‌اندازی روی میز آزمایش. / خروجی مورد انتظار: تهیه قطعات و ساخت نمونه مکانیکی/الکتریکی قابل راه‌اندازی روی میز آزمایش.
- 48: تکمیل BOM و تهیه اجزای مکانیکی، الکترونیکی و پردازشی. / خروجی مورد انتظار: تکمیل BOM و تهیه اجزای مکانیکی، الکترونیکی و پردازشی.
- 49: فهرست خرید نهایی با شماره/مشخصات قطعات و جایگزین‌های قابل قبول. / مدت تخمینی: 1 روز کاری / پیش‌نیاز: 1.6.3 / خروجی مورد انتظار: فهرست خرید نهایی با شماره/مشخصات قطعات و جایگزین‌های قابل قبول.
- 50: قطعات قاب، تسمه، رولر، اتصالات و قطعات ساخت/چاپ سه‌بعدی. / مدت تخمینی: 3 روز کاری / پیش‌نیاز: 2.1.1 / خروجی مورد انتظار: قطعات قاب، تسمه، رولر، اتصالات و قطعات ساخت/چاپ سه‌بعدی.
- 51: قطعات الکترونیکی اصلی و ماژول‌های حسگری. / مدت تخمینی: 3 روز کاری / پیش‌نیاز: 2.1.2 / خروجی مورد انتظار: قطعات الکترونیکی اصلی و ماژول‌های حسگری.
- 52: تجهیزات لازم برای پردازش تصویر و ثبت داده. / مدت تخمینی: 2 روز کاری / پیش‌نیاز: 2.1.3 / خروجی مورد انتظار: تجهیزات لازم برای پردازش تصویر و ثبت داده.

| ID | WBS | Task | Type | Duration | Start | Finish | Predecessors |
| --- | --- | --- | --- | --- | --- | --- | --- |
| 53 | 2.2 | **ساخت و مونتاژ مکانیکی** |  | 13d | 2027-01-28 | 2027-02-15 |  |
| 54 | 2.2.1 | ساخت قاب و نوار نقاله |  | 5d | 2027-01-28 | 2027-02-03 | 50 |
| 55 | 2.2.2 | نصب موتور و انتقال قدرت |  | 3d | 2027-02-04 | 2027-02-08 | 54 |
| 56 | 2.2.3 | ساخت و نصب دریچه و محفظه‌ها |  | 3d | 2027-02-09 | 2027-02-11 | 55 |
| 57 | 2.2.4 | کنترل هم‌راستایی و حرکت مکانیکی |  | 2d | 2027-02-12 | 2027-02-15 | 56 |
| 58 | 2.3 | **مونتاژ برق و الکترونیک** |  | 9d | 2027-02-04 | 2027-02-16 |  |
| 59 | 2.3.1 | مونتاژ توزیع توان و درایورها |  | 3d | 2027-02-04 | 2027-02-08 | 51 |
| 60 | 2.3.2 | سیم‌بندی کنترل‌کننده، موتورها و حسگرها |  | 3d | 2027-02-09 | 2027-02-11 | 59 |
| 61 | 2.3.3 | آزمون اولیه قطبیت، اتصال و جریان |  | 2d | 2027-02-12 | 2027-02-15 | 60 |
| 62 | 2.3.4 | نقطه عطف: نمونه مکانیکی/الکتریکی آماده | milestone | 0d | 2027-02-16 | 2027-02-16 | 57, 61 |
| 63 | 3.0 | **فاز سه: توسعه نرم‌افزار و یکپارچه‌سازی** |  | 33d | 2027-01-19 | 2027-03-04 |  |
| 64 | 3.1 | **توسعه بینایی ماشین** |  | 18d | 2027-01-19 | 2027-02-11 |  |
| 65 | 3.1.1 | جمع‌آوری و برچسب‌گذاری تصاویر |  | 6d | 2027-01-19 | 2027-01-26 | 46 |
| 66 | 3.1.2 | پیاده‌سازی پیش‌پردازش و طبقه‌بندی |  | 6d | 2027-01-27 | 2027-02-03 | 65 |
| 67 | 3.1.3 | پیاده‌سازی آستانه اطمینان و کلاس نامشخص |  | 3d | 2027-02-04 | 2027-02-08 | 66 |
| 68 | 3.1.4 | ارزیابی تفکیک‌پذیری کلاس‌ها |  | 3d | 2027-02-09 | 2027-02-11 | 67 |
| 69 | 3.2 | **توسعه کنترل حرکت و عملگرها** |  | 16d | 2027-01-19 | 2027-02-09 |  |
| 70 | 3.2.1 | پیاده‌سازی خواندن حسگرها و ورودی‌ها |  | 3d | 2027-01-19 | 2027-01-21 | 46 |
| 71 | 3.2.2 | پیاده‌سازی کنترل سرعت نوار نقاله |  | 5d | 2027-01-22 | 2027-01-28 | 70 |
| 72 | 3.2.3 | پیاده‌سازی فرمان عملگر جداسازی |  | 3d | 2027-01-29 | 2027-02-02 | 71 |
| 73 | 3.2.4 | پیاده‌سازی ماشین حالت و مدیریت خطا |  | 5d | 2027-02-03 | 2027-02-09 | 72 |
| 74 | 3.3 | **توسعه ارتباطات و داشبورد** |  | 11d | 2027-01-19 | 2027-02-02 |  |
| 75 | 3.3.1 | پیاده‌سازی ارتباط رایانه و کنترل‌کننده |  | 3d | 2027-01-19 | 2027-01-21 | 46 |
| 76 | 3.3.2 | ساخت داشبورد وضعیت و شمارنده‌ها |  | 5d | 2027-01-22 | 2027-01-28 | 75 |
| 77 | 3.3.3 | ثبت خطا و هشدار پرشدن محفظه |  | 3d | 2027-01-29 | 2027-02-02 | 76 |

Notes:
- 53: مونتاژ قاب، سامانه انتقال و مکانیزم هدایت پسماند. / خروجی مورد انتظار: مونتاژ قاب، سامانه انتقال و مکانیزم هدایت پسماند.
- 54: قاب مونتاژشده و نوار نقاله قابل چرخش. / مدت تخمینی: 3 روز کاری / پیش‌نیاز: 2.1.2 / خروجی مورد انتظار: قاب مونتاژشده و نوار نقاله قابل چرخش.
- 55: موتور نصب‌شده و انتقال حرکت بدون گیر مکانیکی. / مدت تخمینی: 2 روز کاری / پیش‌نیاز: 2.2.1 / خروجی مورد انتظار: موتور نصب‌شده و انتقال حرکت بدون گیر مکانیکی.
- 56: مکانیزم جداسازی نصب‌شده و محفظه‌های برچسب‌گذاری‌شده. / مدت تخمینی: 2 روز کاری / پیش‌نیاز: 2.2.2 / خروجی مورد انتظار: مکانیزم جداسازی نصب‌شده و محفظه‌های برچسب‌گذاری‌شده.
- 57: گزارش بررسی کشش تسمه، لقی، گیرکردن و حرکت آزاد. / مدت تخمینی: 1 روز کاری / پیش‌نیاز: 2.2.3 / خروجی مورد انتظار: گزارش بررسی کشش تسمه، لقی، گیرکردن و حرکت آزاد.
- 58: نصب کنترل‌کننده، درایورها، حسگرها و مدار تغذیه. / خروجی مورد انتظار: نصب کنترل‌کننده، درایورها، حسگرها و مدار تغذیه.
- 59: تغذیه، فیوز/حفاظت و درایورهای نصب‌شده. / مدت تخمینی: 2 روز کاری / پیش‌نیاز: 2.1.3 / خروجی مورد انتظار: تغذیه، فیوز/حفاظت و درایورهای نصب‌شده.
- 60: سیم‌بندی شماره‌گذاری‌شده با نقشه متناظر. / مدت تخمینی: 2 روز کاری / پیش‌نیاز: 2.3.1 / خروجی مورد انتظار: سیم‌بندی شماره‌گذاری‌شده با نقشه متناظر.
- 61: نتیجه آزمون اتصالات و راه‌اندازی اولیه ایمن. / مدت تخمینی: 1 روز کاری / پیش‌نیاز: 2.3.2 / خروجی مورد انتظار: نتیجه آزمون اتصالات و راه‌اندازی اولیه ایمن.
- 62: نمونه آماده برای توسعه نرم‌افزار و آزمون‌های زیرسامانه‌ای. / مدت تخمینی: نقطه‌عطف (صفر روز کاری) / پیش‌نیاز: 2.2.4, 2.3.3 / خروجی مورد انتظار: نمونه آماده برای توسعه نرم‌افزار و آزمون‌های زیرسامانه‌ای.
- 63: پیاده‌سازی الگوریتم تشخیص، کنترل حرکت، داشبورد و هماهنگی end-to-end. / خروجی مورد انتظار: پیاده‌سازی الگوریتم تشخیص، کنترل حرکت، داشبورد و هماهنگی end-to-end.
- 64: ساخت و ارزیابی تشخیص تصویری کلاس‌های هدف. / خروجی مورد انتظار: ساخت و ارزیابی تشخیص تصویری کلاس‌های هدف.
- 65: مجموعه داده مستند شامل نمونه‌های هر کلاس و موارد نامشخص. / مدت تخمینی: 4 روز کاری / پیش‌نیاز: 1.6.3 / خروجی مورد انتظار: مجموعه داده مستند شامل نمونه‌های هر کلاس و موارد نامشخص.
- 66: کد اجرایی دریافت تصویر و تخمین کلاس پسماند. / مدت تخمینی: 4 روز کاری / پیش‌نیاز: 3.1.1 / خروجی مورد انتظار: کد اجرایی دریافت تصویر و تخمین کلاس پسماند.
- 67: قواعد کم‌اطمینانی و مسیر امن برای موارد نامشخص. / مدت تخمینی: 2 روز کاری / پیش‌نیاز: 3.1.2 / خروجی مورد انتظار: قواعد کم‌اطمینانی و مسیر امن برای موارد نامشخص.
- 68: نتایج آزمون اولیه برای هر کلاس و فهرست خطاهای رایج. / مدت تخمینی: 2 روز کاری / پیش‌نیاز: 3.1.3 / خروجی مورد انتظار: نتایج آزمون اولیه برای هر کلاس و فهرست خطاهای رایج.
- 69: پیاده‌سازی ورودی حسگرها، کنترل موتور، توالی حرکت و مدیریت خطا. / خروجی مورد انتظار: پیاده‌سازی ورودی حسگرها، کنترل موتور، توالی حرکت و مدیریت خطا.
- 70: ماژول‌های نرم‌افزاری حسگر حضور، انکودر و حسگر فلز. / مدت تخمینی: 2 روز کاری / پیش‌نیاز: 1.6.3 / خروجی مورد انتظار: ماژول‌های نرم‌افزاری حسگر حضور، انکودر و حسگر فلز.
- 71: کنترل سرعت با بازخورد انکودر؛ PID در صورت سازگاری سخت‌افزار. / مدت تخمینی: 3 روز کاری / پیش‌نیاز: 3.2.1 / خروجی مورد انتظار: کنترل سرعت با بازخورد انکودر؛ PID در صورت سازگاری سخت‌افزار.
- 72: منطق فرمان‌دهی به سروو/عملگر و زمان‌بندی باز و بسته شدن. / مدت تخمینی: 2 روز کاری / پیش‌نیاز: 3.2.2 / خروجی مورد انتظار: منطق فرمان‌دهی به سروو/عملگر و زمان‌بندی باز و بسته شدن.
- 73: مدیریت گیرکردن، پرشدن محفظه، خطای حسگر و توقف اضطراری. / مدت تخمینی: 3 روز کاری / پیش‌نیاز: 3.2.3 / خروجی مورد انتظار: مدیریت گیرکردن، پرشدن محفظه، خطای حسگر و توقف اضطراری.
- 74: نمایش وضعیت، آمار تفکیک و رویدادهای خطا. / خروجی مورد انتظار: نمایش وضعیت، آمار تفکیک و رویدادهای خطا.
- 75: ارتباط پایدار و قالب داده آزمایش‌شده میان دو بخش. / مدت تخمینی: 2 روز کاری / پیش‌نیاز: 1.6.3 / خروجی مورد انتظار: ارتباط پایدار و قالب داده آزمایش‌شده میان دو بخش.
- 76: نمایش وضعیت دستگاه، شمارش هر کلاس و آخرین نتیجه تشخیص. / مدت تخمینی: 3 روز کاری / پیش‌نیاز: 3.3.1 / خروجی مورد انتظار: نمایش وضعیت دستگاه، شمارش هر کلاس و آخرین نتیجه تشخیص.
- 77: ثبت زمان‌دار خطاها و هشدارهای پرشدن/اختلال. / مدت تخمینی: 2 روز کاری / پیش‌نیاز: 3.3.2 / خروجی مورد انتظار: ثبت زمان‌دار خطاها و هشدارهای پرشدن/اختلال.

| ID | WBS | Task | Type | Duration | Start | Finish | Predecessors |
| --- | --- | --- | --- | --- | --- | --- | --- |
| 78 | 3.4 | **یکپارچه‌سازی سامانه** |  | 12d | 2027-02-17 | 2027-03-04 |  |
| 79 | 3.4.1 | هماهنگ‌سازی تشخیص با حرکت نوار |  | 3d | 2027-02-17 | 2027-02-19 | 68, 73, 77, 62 |
| 80 | 3.4.2 | کالیبراسیون موقعیت دوربین و عملگر |  | 3d | 2027-02-22 | 2027-02-24 | 79 |
| 81 | 3.4.3 | اجرای زنجیره کامل برای کلاس‌های هدف |  | 5d | 2027-02-25 | 2027-03-03 | 80 |
| 82 | 3.4.4 | نقطه عطف: تکمیل یکپارچه‌سازی | milestone | 0d | 2027-03-04 | 2027-03-04 | 81 |
| 83 | 4.0 | **فاز چهار: آزمون، ارزیابی و بهینه‌سازی** |  | 40d | 2027-03-05 | 2027-04-29 |  |
| 84 | 4.1 | **آزمون زیرسامانه‌ها** |  | 11d | 2027-03-05 | 2027-03-19 |  |
| 85 | 4.1.1 | آزمون نوار نقاله در بارهای مختلف |  | 3d | 2027-03-05 | 2027-03-09 | 82 |
| 86 | 4.1.2 | آزمون دوربین و حسگرها در شرایط مختلف |  | 3d | 2027-03-10 | 2027-03-12 | 85 |
| 87 | 4.1.3 | آزمون تکرارپذیری عملگر جداسازی |  | 3d | 2027-03-15 | 2027-03-17 | 86 |
| 88 | 4.1.4 | آزمون جریان و دمای اجزای الکتریکی |  | 2d | 2027-03-18 | 2027-03-19 | 87 |
| 89 | 4.2 | **آزمون عملکرد یکپارچه** |  | 14d | 2027-03-22 | 2027-04-08 |  |
| 90 | 4.2.1 | آزمون تکراری پلاستیک، فلز و کاغذ |  | 5d | 2027-03-22 | 2027-03-26 | 88 |
| 91 | 4.2.2 | آزمون اشیای نامشخص و تشخیص کم‌اطمینان |  | 3d | 2027-03-29 | 2027-03-31 | 90 |
| 92 | 4.2.3 | آزمون خطا، گیرکردن و توقف اضطراری |  | 3d | 2027-04-01 | 2027-04-05 | 91 |
| 93 | 4.2.4 | آزمون کارکرد پیوسته |  | 3d | 2027-04-06 | 2027-04-08 | 92 |
| 94 | 4.3 | **اندازه‌گیری شاخص‌های عملکرد** |  | 11d | 2027-04-09 | 2027-04-23 |  |
| 95 | 4.3.1 | تدوین ماتریس آزمون و روش نمونه‌گیری |  | 2d | 2027-04-09 | 2027-04-12 | 93 |
| 96 | 4.3.2 | محاسبه دقت و شاخص‌های طبقه‌بندی |  | 3d | 2027-04-13 | 2027-04-15 | 95 |
| 97 | 4.3.3 | اندازه‌گیری نرخ جداسازی، ظرفیت و زمان پاسخ |  | 3d | 2027-04-16 | 2027-04-20 | 96 |
| 98 | 4.3.4 | تحلیل خطاها و تکرارپذیری |  | 3d | 2027-04-21 | 2027-04-23 | 97 |
| 99 | 4.4 | **اصلاح و بهینه‌سازی** |  | 4d | 2027-04-26 | 2027-04-29 |  |
| 100 | 4.4.1 | بهبود نورپردازی/جایگاه دوربین/مدل |  | 3d | 2027-04-26 | 2027-04-28 | 98 |
| 101 | 4.4.2 | تنظیم سرعت و زمان‌بندی کنترل |  | 3d | 2027-04-26 | 2027-04-28 | 98 |
| 102 | 4.4.3 | اصلاح هم‌راستایی مکانیکی و آزمون مجدد |  | 3d | 2027-04-26 | 2027-04-28 | 98 |
| 103 | 4.4.4 | نقطه عطف: پذیرش عملکرد یا ثبت محدودیت‌ها | milestone | 0d | 2027-04-29 | 2027-04-29 | 100, 101, 102 |

Notes:
- 78: هماهنگی زمان‌بندی دوربین، نوار نقاله و عملگر جداسازی. / خروجی مورد انتظار: هماهنگی زمان‌بندی دوربین، نوار نقاله و عملگر جداسازی.
- 79: تطبیق زمان/موقعیت تشخیص شیء با نقطه جداسازی. / مدت تخمینی: 2 روز کاری / پیش‌نیاز: 3.1.4, 3.2.4, 3.3.3, 2.3.4 / خروجی مورد انتظار: تطبیق زمان/موقعیت تشخیص شیء با نقطه جداسازی.
- 80: پارامترهای کالیبراسیون و موقعیت جداسازی ثبت‌شده. / مدت تخمینی: 2 روز کاری / پیش‌نیاز: 3.4.1 / خروجی مورد انتظار: پارامترهای کالیبراسیون و موقعیت جداسازی ثبت‌شده.
- 81: اجرای ورود شیء، تشخیص، کنترل و هدایت به محفظه. / مدت تخمینی: 3 روز کاری / پیش‌نیاز: 3.4.2 / خروجی مورد انتظار: اجرای ورود شیء، تشخیص، کنترل و هدایت به محفظه.
- 82: نسخه یکپارچه آماده آزمون عملکردی سیستم. / مدت تخمینی: نقطه‌عطف (صفر روز کاری) / پیش‌نیاز: 3.4.3 / خروجی مورد انتظار: نسخه یکپارچه آماده آزمون عملکردی سیستم.
- 83: ارزیابی کمّی زیرسامانه‌ها و کل سامانه، ثبت خطاها و اصلاح عملکرد. / خروجی مورد انتظار: ارزیابی کمّی زیرسامانه‌ها و کل سامانه، ثبت خطاها و اصلاح عملکرد.
- 84: تأیید عملکرد پایه اجزای مکانیکی، حسگرها و عملگرها. / خروجی مورد انتظار: تأیید عملکرد پایه اجزای مکانیکی، حسگرها و عملگرها.
- 85: ثبت عملکرد انتقال و پایداری حرکت در بار آزمایشی. / مدت تخمینی: 2 روز کاری / پیش‌نیاز: 3.4.4 / خروجی مورد انتظار: ثبت عملکرد انتقال و پایداری حرکت در بار آزمایشی.
- 86: نتایج کارکرد حسگرها و تصویربرداری در نور/فاصله تعریف‌شده. / مدت تخمینی: 2 روز کاری / پیش‌نیاز: 4.1.1 / خروجی مورد انتظار: نتایج کارکرد حسگرها و تصویربرداری در نور/فاصله تعریف‌شده.
- 87: اندازه‌گیری موفقیت فرمان و تکرارپذیری مکانیزم. / مدت تخمینی: 2 روز کاری / پیش‌نیاز: 4.1.2 / خروجی مورد انتظار: اندازه‌گیری موفقیت فرمان و تکرارپذیری مکانیزم.
- 88: ثبت جریان مصرفی و بررسی گرم‌شدن غیرعادی. / مدت تخمینی: 1 روز کاری / پیش‌نیاز: 4.1.3 / خروجی مورد انتظار: ثبت جریان مصرفی و بررسی گرم‌شدن غیرعادی.
- 89: بررسی سناریوهای عادی و شرایط مرزی/خطا. / خروجی مورد انتظار: بررسی سناریوهای عادی و شرایط مرزی/خطا.
- 90: جدول آزمون‌های تکراری و نتیجه درست/نادرست هر شیء. / مدت تخمینی: 3 روز کاری / پیش‌نیاز: 4.1.4 / خروجی مورد انتظار: جدول آزمون‌های تکراری و نتیجه درست/نادرست هر شیء.
- 91: تأیید مسیر نامشخص برای جلوگیری از جداسازی نادرست. / مدت تخمینی: 2 روز کاری / پیش‌نیاز: 4.2.1 / خروجی مورد انتظار: تأیید مسیر نامشخص برای جلوگیری از جداسازی نادرست.
- 92: نتایج آزمون خطاهای تعریف‌شده و واکنش ایمن دستگاه. / مدت تخمینی: 2 روز کاری / پیش‌نیاز: 4.2.2 / خروجی مورد انتظار: نتایج آزمون خطاهای تعریف‌شده و واکنش ایمن دستگاه.
- 93: ثبت پایداری و خرابی‌ها طی یک بازه کار پیوسته تعریف‌شده. / مدت تخمینی: 2 روز کاری / پیش‌نیاز: 4.2.3 / خروجی مورد انتظار: ثبت پایداری و خرابی‌ها طی یک بازه کار پیوسته تعریف‌شده.
- 94: محاسبه معیارهای کمی و تهیه نمودارهای نتایج. / خروجی مورد انتظار: محاسبه معیارهای کمی و تهیه نمودارهای نتایج.
- 95: برگه روش آزمون، تعداد تکرارها و معیار موفقیت. / مدت تخمینی: 1 روز کاری / پیش‌نیاز: 4.2.4 / خروجی مورد انتظار: برگه روش آزمون، تعداد تکرارها و معیار موفقیت.
- 96: ماتریس درهم‌ریختگی و شاخص‌های متناسب با داده آزمون. / مدت تخمینی: 2 روز کاری / پیش‌نیاز: 4.3.1 / خروجی مورد انتظار: ماتریس درهم‌ریختگی و شاخص‌های متناسب با داده آزمون.
- 97: جدول نرخ موفقیت جداسازی، اشیا در دقیقه و زمان پاسخ. / مدت تخمینی: 2 روز کاری / پیش‌نیاز: 4.3.2 / خروجی مورد انتظار: جدول نرخ موفقیت جداسازی، اشیا در دقیقه و زمان پاسخ.
- 98: نمودارها، عوامل خطا و جمع‌بندی محدودیت‌های آزمون. / مدت تخمینی: 2 روز کاری / پیش‌نیاز: 4.3.3 / خروجی مورد انتظار: نمودارها، عوامل خطا و جمع‌بندی محدودیت‌های آزمون.
- 99: اعمال اصلاحات مبتنی بر داده و تکرار آزمون‌های کلیدی. / خروجی مورد انتظار: اعمال اصلاحات مبتنی بر داده و تکرار آزمون‌های کلیدی.
- 100: ثبت تغییرات و مقایسه نتایج قبل و بعد. / مدت تخمینی: 2 روز کاری / پیش‌نیاز: 4.3.4 / خروجی مورد انتظار: ثبت تغییرات و مقایسه نتایج قبل و بعد.
- 101: پارامترهای کنترل/زمان‌بندی اصلاح‌شده و نتایج مرتبط. / مدت تخمینی: 2 روز کاری / پیش‌نیاز: 4.3.4 / خروجی مورد انتظار: پارامترهای کنترل/زمان‌بندی اصلاح‌شده و نتایج مرتبط.
- 102: بهبودهای مکانیکی ثبت‌شده و نتیجه آزمون پس از اصلاح. / مدت تخمینی: 2 روز کاری / پیش‌نیاز: 4.3.4 / خروجی مورد انتظار: بهبودهای مکانیکی ثبت‌شده و نتیجه آزمون پس از اصلاح.
- 103: چک‌لیست معیارهای پذیرش با نتیجه قبول/رد و موارد باز. / مدت تخمینی: نقطه‌عطف (صفر روز کاری) / پیش‌نیاز: 4.4.1, 4.4.2, 4.4.3 / خروجی مورد انتظار: چک‌لیست معیارهای پذیرش با نتیجه قبول/رد و موارد باز.

| ID | WBS | Task | Type | Duration | Start | Finish | Predecessors |
| --- | --- | --- | --- | --- | --- | --- | --- |
| 104 | 5.0 | **فاز پنج: مستندسازی، تحویل و ارائه نهایی** |  | 24d | 2027-04-30 | 2027-06-02 |  |
| 105 | 5.1 | **مستندسازی فنی** |  | 10d | 2027-04-30 | 2027-05-13 |  |
| 106 | 5.1.1 | تکمیل CAD، شماتیک و فهرست قطعات |  | 3d | 2027-04-30 | 2027-05-04 | 103 |
| 107 | 5.1.2 | مستندسازی کدها، مدل و پروتکل‌ها |  | 3d | 2027-05-05 | 2027-05-07 | 106 |
| 108 | 5.1.3 | تهیه راهنمای کاربری و نگهداری |  | 2d | 2027-05-10 | 2027-05-11 | 107 |
| 109 | 5.1.4 | تهیه راهنمای خطا و محدودیت‌های ایمنی |  | 2d | 2027-05-12 | 2027-05-13 | 108 |
| 110 | 5.2 | **گزارش نتایج و ارزیابی توسعه محصول** |  | 8d | 2027-05-14 | 2027-05-25 |  |
| 111 | 5.2.1 | تهیه گزارش آزمون و نمودارها |  | 3d | 2027-05-14 | 2027-05-18 | 109 |
| 112 | 5.2.2 | برآورد هزینه نمونه و بررسی ساخت‌پذیری |  | 3d | 2027-05-19 | 2027-05-21 | 111 |
| 113 | 5.2.3 | تدوین مسیر توسعه و تجاری‌سازی آتی |  | 2d | 2027-05-24 | 2027-05-25 | 112 |
| 114 | 5.3 | **آماده‌سازی تحویل و ارائه** |  | 6d | 2027-05-26 | 2027-06-02 |  |
| 115 | 5.3.1 | تکمیل گزارش نهایی پروژه |  | 4d | 2027-05-26 | 2027-05-31 | 113 |
| 116 | 5.3.2 | آماده‌سازی اجرای نمایشی و ارائه |  | 1d | 2027-06-01 | 2027-06-01 | 115 |
| 117 | 5.3.3 | نقطه عطف: ارائه و تحویل نهایی | milestone | 0d | 2027-06-02 | 2027-06-02 | 115, 116 |

Notes:
- 104: تهیه مستندات فنی، گزارش نتایج، ارزیابی اولیه هزینه و نمایش نهایی نمونه. / خروجی مورد انتظار: تهیه مستندات فنی، گزارش نتایج، ارزیابی اولیه هزینه و نمایش نهایی نمونه.
- 105: تحویل نقشه‌ها، قطعات، کدها، دستورالعمل کاربری و نگهداری. / خروجی مورد انتظار: تحویل نقشه‌ها، قطعات، کدها، دستورالعمل کاربری و نگهداری.
- 106: بسته نهایی نقشه‌ها، شماتیک و BOM نهایی. / مدت تخمینی: 2 روز کاری / پیش‌نیاز: 4.4.4 / خروجی مورد انتظار: بسته نهایی نقشه‌ها، شماتیک و BOM نهایی.
- 107: ساختار نرم‌افزار، روش اجرا، نسخه مدل و قالب داده‌ها. / مدت تخمینی: 2 روز کاری / پیش‌نیاز: 5.1.1 / خروجی مورد انتظار: ساختار نرم‌افزار، روش اجرا، نسخه مدل و قالب داده‌ها.
- 108: دستور راه‌اندازی، توقف، استفاده و نگهداری اولیه. / مدت تخمینی: 1 روز کاری / پیش‌نیاز: 5.1.2 / خروجی مورد انتظار: دستور راه‌اندازی، توقف، استفاده و نگهداری اولیه.
- 109: محدودیت‌های استفاده و شیوه برخورد با خطاهای شناخته‌شده. / مدت تخمینی: 1 روز کاری / پیش‌نیاز: 5.1.3 / خروجی مورد انتظار: محدودیت‌های استفاده و شیوه برخورد با خطاهای شناخته‌شده.
- 110: تجمیع شواهد آزمون و برآورد اولیه مسیر توسعه آینده. / خروجی مورد انتظار: تجمیع شواهد آزمون و برآورد اولیه مسیر توسعه آینده.
- 111: گزارش نتایج کمّی و تحلیل معیارهای پذیرش. / مدت تخمینی: 2 روز کاری / پیش‌نیاز: 5.1.4 / خروجی مورد انتظار: گزارش نتایج کمّی و تحلیل معیارهای پذیرش.
- 112: BOM هزینه‌ای اولیه و موارد نیازمند بازطراحی برای تولید. / مدت تخمینی: 2 روز کاری / پیش‌نیاز: 5.2.1 / خروجی مورد انتظار: BOM هزینه‌ای اولیه و موارد نیازمند بازطراحی برای تولید.
- 113: محدودیت‌ها، قابلیت‌های توسعه و فرضیات موردنیاز برای مطالعه بازار. / مدت تخمینی: 1 روز کاری / پیش‌نیاز: 5.2.2 / خروجی مورد انتظار: محدودیت‌ها، قابلیت‌های توسعه و فرضیات موردنیاز برای مطالعه بازار.
- 114: تکمیل گزارش دانشگاهی و آماده‌سازی نمایش عملی. / خروجی مورد انتظار: تکمیل گزارش دانشگاهی و آماده‌سازی نمایش عملی.
- 115: گزارش شامل مسئله، طراحی، پیاده‌سازی، آزمون، نتایج و محدودیت‌ها. / مدت تخمینی: 3 روز کاری / پیش‌نیاز: 5.2.3 / خروجی مورد انتظار: گزارش شامل مسئله، طراحی، پیاده‌سازی، آزمون، نتایج و محدودیت‌ها.
- 116: سناریوی دمو، چک‌لیست تجهیزات و اسلایدهای ارائه. / مدت تخمینی: 1 روز کاری / پیش‌نیاز: 5.3.1 / خروجی مورد انتظار: سناریوی دمو، چک‌لیست تجهیزات و اسلایدهای ارائه.
- 117: نمونه فیزیکی، کدها، مستندات و نتایج آماده تحویل. / مدت تخمینی: نقطه‌عطف (صفر روز کاری) / پیش‌نیاز: 5.3.1, 5.3.2 / خروجی مورد انتظار: نمونه فیزیکی، کدها، مستندات و نتایج آماده تحویل.
